# 中联泰国园区DCOM平台项目

Schedule from a web Gantt chart, 2025-12-30 to 2025-12-30.
Saturdays and Sundays are off

## Schedule

| ID | WBS | Task | Duration | Start | Finish |
| --- | --- | --- | --- | --- | --- |
| 2 | 1 | DCOM平台系统合同签订 | 1d | 2025-12-30 | 2025-12-30 |
